Schedule from MS Project, 2015-08-10 to 2015-11-02.

## Calendars

- Standard: Mon-Sun 08:00-17:00.

## Resources

| Resource |
| --- |
| Man Fu Lei |
| Abdul Sami |
| Leslie Vundu |
| Bilawal |
| Robert |
| Sebastian Zander |

## Schedule

| ID | WBS | Task | Type | Duration | Start | Finish | Predecessors | Total slack | Free slack | Constraint | Resources | Work |
| --- | --- | --- | --- | --- | --- | --- | --- | --- | --- | --- | --- | --- |
| 1 | 1 | **Initiating** |  | 19.62d | 2015-08-10 | 2015-08-27 |  | 0.38d |  |  |  | 168h |
| 2 | 1.1 | Acquire the project | milestone | 0d | 2015-08-10 | 2015-08-10 |  | 0.62d | 0d |  | Abdul Sami; Bilawal; Leslie Vundu; Man Fu Lei; Robert |  |
| 3 | 1.2 | **Scope management** |  | 19.62d | 2015-08-10 | 2015-08-27 |  | 0.38d |  |  |  | 168h |
| 4 | 1.2.1 | **Define requirements** |  | 17.62d | 2015-08-10 | 2015-08-25 |  | 0d |  |  |  | 136h |
| 5 | 1.2.1.1 | Study the client document |  | 4d | 2015-08-10 | 2015-08-13 | 2 | 1d | 0d |  | Robert | 32h |
| 6 | 1.2.1.2 | Enquiry the client for requirements | milestone | 0d | 2015-08-13 | 2015-08-13 | 5 | 1d | 0d |  | Abdul Sami; Bilawal; Leslie Vundu; Man Fu Lei; Robert |  |
| 7 | 1.2.1.3 | Finish the requirement document |  | 10d | 2015-08-13 | 2015-08-22 | 6 | 1d | 0d |  | Leslie Vundu | 80h |
| 8 | 1.2.1.4 | Client reviews the requirement document | manual | 3d | 2015-08-23 | 2015-08-25 | 7 |  |  |  | Sebastian Zander | 24h |
| 9 | 1.2.2 | Requirement document approved | milestone | 0d | 2015-08-25 | 2015-08-25 | 8 | 0.38d | 0d |  | Sebastian Zander |  |
| 10 | 1.2.3 | **Submit the requirement document** |  | 2d | 2015-08-25 | 2015-08-27 |  | 0.38d | 0d |  |  | 16h |
| 11 | 1.2.3.1 | Sign the Deliverable Task Breakdown Statement | milestone | 0d | 2015-08-25 | 2015-08-25 | 9 | 0.38d | 0d |  | Abdul Sami; Bilawal; Leslie Vundu; Man Fu Lei; Robert |  |
| 12 | 1.2.3.2 | Review the requirement document |  | 2d | 2015-08-25 | 2015-08-27 | 11 | 0.38d | 0d |  | Man Fu Lei | 16h |
| 13 | 1.2.3.3 | Submit the requirement document | milestone | 0d | 2015-08-27 | 2015-08-27 | 12 | 0.38d |  | finish no later than 2015-08-27 | Abdul Sami; Bilawal; Leslie Vundu; Man Fu Lei; Robert |  |
| 14 | 1.2.4 | Develop project charter | manual | 1d | 2015-08-24 | 2015-08-24 | 6 |  |  |  | Man Fu Lei | 8h |
| 15 | 1.2.5 | **Define scope** |  | 2.75d | 2015-08-22 | 2015-08-24 |  | 1.25d |  |  |  | 8h |
| 16 | 1.2.5.1 | Create work breakdown structure | milestone | 0d | 2015-08-22 | 2015-08-22 | 7 | 4d | 0d |  | Man Fu Lei |  |
| 17 | 1.2.5.2 | Create scope statement | manual | 1d | 2015-08-24 | 2015-08-24 | 7 |  |  |  | Leslie Vundu | 8h |
| 18 | 2 | **Analysis** |  | 6.62d | 2015-08-19 | 2015-08-24 |  | 0d |  |  |  | 16h |
| 19 | 2.1 | **Risk management** |  | 1d | 2015-08-24 | 2015-08-24 |  | 0d |  |  |  | 8h |
| 20 | 2.1.1 | Identify risks | manual | 1d | 2015-08-24 | 2015-08-24 | 16 |  |  |  | Man Fu Lei | 8h |
| 21 | 2.1.2 | Draw Probability/Impact Matrix | milestone | 0d | 2015-08-24 | 2015-08-24 | 20 | 3.25d | 0d |  | Bilawal |  |
| 22 | 2.1.3 | Develop risk mitigation strategies | milestone | 0d | 2015-08-24 | 2015-08-24 | 21 | 3.25d | 2.25d |  | Leslie Vundu |  |
| 23 | 2.2 | **Human resource management** |  | 5.62d | 2015-08-19 | 2015-08-24 |  | 0d |  |  |  | 8h |
| 24 | 2.2.1 | Develop conflict resolving plan | manual | 1d | 2015-08-19 | 2015-08-19 | 6 |  |  |  | Robert | 8h |
| 25 | 2.2.2 | Identify different roles of team members | milestone, manual | 0d | 2015-08-24 | 2015-08-24 | 16 |  |  |  | Abdul Sami |  |
| 26 | 2.2.3 | Drawing Responsibility Assignment Matrix | milestone | 0d | 2015-08-24 | 2015-08-24 | 25 | 4.25d | 3.25d |  | Bilawal |  |

| ID | WBS | Task | Type | Duration | Start | Finish | Predecessors | Total slack | Free slack | Constraint | Deadline | Resources | Work |
| --- | --- | --- | --- | --- | --- | --- | --- | --- | --- | --- | --- | --- | --- |
| 27 | 3 | **Planning** |  | 15.62d | 2015-08-13 | 2015-08-27 |  | 0.38d |  |  |  |  | 504h |
| 28 | 3.1 | **Time management** |  | 1d | 2015-08-22 | 2015-08-23 |  | 5d | 4d |  |  |  | 8h |
| 29 | 3.1.1 | Identify the dependencies among activities | milestone | 0d | 2015-08-22 | 2015-08-22 | 16 | 5d | 0d |  |  | Leslie Vundu |  |
| 30 | 3.1.2 | Develop the Gantt chart |  | 1d | 2015-08-22 | 2015-08-23 | 29 | 5d | 4d |  |  | Man Fu Lei | 8h |
| 31 | 3.2 | **Communication management** |  | 13d | 2015-08-13 | 2015-08-25 |  | 3d | 2d |  |  |  | 104h |
| 32 | 3.2.1 | Analyze communication requirements of the stakeholders |  | 8d | 2015-08-13 | 2015-08-20 | 6 | 3d | 0d |  |  | Abdul Sami | 64h |
| 33 | 3.2.2 | Determine communication methods and the flow of information |  | 5d | 2015-08-20 | 2015-08-25 | 32 | 3d | 2d |  |  | Bilawal | 40h |
| 34 | 3.3 | **Quality management** |  | 2d | 2015-08-22 | 2015-08-24 |  | 4d | 3d |  |  |  | 16h |
| 35 | 3.3.1 | Identify product functions |  | 1d | 2015-08-22 | 2015-08-23 | 7 | 4d | 0d |  |  | Abdul Sami | 8h |
| 36 | 3.3.2 | Define successful criteria for the product |  | 1d | 2015-08-23 | 2015-08-24 | 35 | 4d | 3d |  |  | Abdul Sami | 8h |
| 37 | 3.4 | **Cost management** |  | 2d | 2015-08-22 | 2015-08-24 |  | 4d | 3d |  |  |  | 16h |
| 38 | 3.4.1 | Identify intangible costs in terms of labour hours |  | 2d | 2015-08-22 | 2015-08-24 | 16 | 4d | 3d |  |  | Robert | 16h |
| 39 | 3.5 | Develop project management plan |  | 15d | 2015-08-13 | 2015-08-26 | 6 | 1d | 0d |  |  | Man Fu Lei; Leslie Vundu; Abdul Sami | 360h |
| 40 | 3.6 | Project management plan finished | milestone | 0d | 2015-08-26 | 2015-08-26 | 14, 17, 19, 22, 26, 30, 33, 36, 38, 39, 15, 23, 28, 31, 34, 37 | 1d | 0.62d |  |  |  |  |
| 41 | 3.7 | Submit Project management plan | milestone | 0d | 2015-08-27 | 2015-08-27 | 40, 10 | 0.38d |  | finish no later than 2015-08-27 |  | Abdul Sami; Bilawal; Leslie Vundu; Man Fu Lei; Robert |  |
| 42 | 4 | **Designing** |  | 21.38d | 2015-08-22 | 2015-09-10 |  | 0d |  |  |  |  | 184h |
| 43 | 4.1 | **Preliminary design** |  | 1d | 2015-08-22 | 2015-08-22 |  | 0d |  |  |  |  | 8h |
| 44 | 4.1.1 | Draw Data Flow Diagrams | milestone, manual | 0d | 2015-08-22 | 2015-08-22 | 6 |  |  |  |  | Abdul Sami |  |
| 45 | 4.1.2 | Draw E-R diagram |  | 1d | 2015-08-22 | 2015-08-22 | 44 | 10.5d | 0d |  |  | Man Fu Lei | 8h |
| 46 | 4.2 | **Detailed design** |  | 19d | 2015-08-22 | 2015-09-07 |  | 3.5d |  |  |  |  | 176h |
| 47 | 4.2.1 | Draw Detailed Data Flow Diagrams |  | 4d | 2015-08-22 | 2015-08-25 | 44 | 10.5d | 0d |  |  | Man Fu Lei | 32h |
| 48 | 4.2.2 | Draw Detailed E-R diagram |  | 3d | 2015-08-22 | 2015-08-25 | 45 | 10.5d | 0d |  |  | Man Fu Lei | 24h |
| 49 | 4.2.3 | Finish design document |  | 15d | 2015-08-25 | 2015-09-07 | 48, 47 | 3.5d | 2.38d |  |  | Man Fu Lei | 120h |
| 50 | 4.3 | Submit design document | milestone, manual | 0d | 2015-09-10 | 2015-09-10 | 49, 41 |  |  | start no earlier than 2015-09-10 | 2015-09-10 | Abdul Sami; Bilawal; Leslie Vundu; Man Fu Lei; Robert |  |

| ID | WBS | Task | Type | Duration | Start | Finish | Predecessors | Total slack | Free slack | Resources | Work |
| --- | --- | --- | --- | --- | --- | --- | --- | --- | --- | --- | --- |
| 51 | 5 | **Executing** |  | 63.62d | 2015-08-25 | 2015-10-21 |  | 0d |  |  | 1184h |
| 52 | 5.1 | **Develop the software** |  | 35d | 2015-08-25 | 2015-09-25 |  | 2.62d |  | Man Fu Lei | 704h |
| 53 | 5.1.1 | **Create the database containing** |  | 2d | 2015-08-25 | 2015-08-27 |  | 5.62d | 0d |  | 64h |
| 54 | 5.1.1.1 | server details |  | 2d | 2015-08-25 | 2015-08-27 | 9 | 5.62d |  | Abdul Sami | 16h |
| 55 | 5.1.1.2 | service details |  | 2d | 2015-08-25 | 2015-08-27 | 9 | 5.62d |  | Bilawal | 16h |
| 56 | 5.1.1.3 | probing test details |  | 2d | 2015-08-25 | 2015-08-27 | 9 | 5.62d |  | Leslie Vundu | 16h |
| 57 | 5.1.1.4 | IP address details |  | 2d | 2015-08-25 | 2015-08-27 | 9 | 5.62d |  | Robert | 16h |
| 58 | 5.1.2 | Database created | milestone | 0d | 2015-08-27 | 2015-08-27 | 53 | 3d | 0d |  |  |
| 59 | 5.1.3 | **Develop the probing module using** |  | 5d | 2015-08-25 | 2015-08-30 |  | 2.62d |  |  | 128h |
| 60 | 5.1.3.1 | ICMPv4 |  | 2d | 2015-08-25 | 2015-08-27 | 9 | 4.62d | 0d | Man Fu Lei | 16h |
| 61 | 5.1.3.2 | ICMPv6 | milestone | 0d | 2015-08-27 | 2015-08-27 | 60 | 4.62d | 2d | Abdul Sami |  |
| 62 | 5.1.3.3 | HTTP GET request using IPv4 addresses |  | 4d | 2015-08-25 | 2015-08-29 | 9 | 2.62d | 0d | Man Fu Lei | 32h |
| 63 | 5.1.3.4 | HTTP GET request using IPv6 addresses | milestone | 0d | 2015-08-29 | 2015-08-29 | 62 | 2.62d | 0d | Abdul Sami |  |
| 64 | 5.1.3.5 | SMTP connection towards IPv4 addresses |  | 4d | 2015-08-25 | 2015-08-29 | 9 | 2.62d | 0d | Man Fu Lei | 32h |
| 65 | 5.1.3.6 | SMTP connection towards IPv6 addresses | milestone | 0d | 2015-08-29 | 2015-08-29 | 64 | 2.62d | 0d | Abdul Sami |  |
| 66 | 5.1.3.7 | DNS query towards IPv4 addresses |  | 4d | 2015-08-25 | 2015-08-29 | 9 | 2.62d | 0d | Man Fu Lei | 32h |
| 67 | 5.1.3.8 | DNS query towards IPv6 addresses | milestone | 0d | 2015-08-29 | 2015-08-29 | 66 | 2.62d | 0d | Abdul Sami |  |
| 68 | 5.1.3.9 | implementing connection timeout and error handling |  | 1d | 2015-08-29 | 2015-08-30 | 61, 63, 65, 67 | 2.62d | 0d | Bilawal | 8h |
| 69 | 5.1.3.10 | implementing the function of reading a list of servers |  | 1d | 2015-08-25 | 2015-08-26 | 9 | 6.62d | 4d | Man Fu Lei | 8h |
| 70 | 5.1.4 | Probing module finished | milestone | 0d | 2015-08-30 | 2015-08-30 | 68, 69 | 2.62d | 0d |  |  |
| 71 | 5.1.5 | **Develop the processing and storing module by** |  | 4d | 2015-08-27 | 2015-08-30 |  | 2.62d | 0d |  | 16h |
| 72 | 5.1.5.1 | storing server and measurement data |  | 1d | 2015-08-27 | 2015-08-28 | 58 | 3d | 0d | Abdul Sami | 8h |
| 73 | 5.1.5.2 | removing measurement errors |  | 1d | 2015-08-30 | 2015-08-30 | 70 | 2.62d |  | Bilawal | 8h |
| 74 | 5.1.6 | Processing and storing module finished | milestone | 0d | 2015-08-30 | 2015-08-30 | 71 | 2.62d | 0d |  |  |

| ID | WBS | Task | Type | Duration | Start | Finish | Predecessors | Total slack | Free slack | Resources | Work |
| --- | --- | --- | --- | --- | --- | --- | --- | --- | --- | --- | --- |
| 75 | 5.1.7 | **Develop the searching module by** |  | 11d | 2015-08-25 | 2015-09-04 |  | 5.62d | 0d |  | 80h |
| 76 | 5.1.7.1 | capturing the keywords |  | 2d | 2015-08-25 | 2015-08-27 | 9 | 14.62d |  | Man Fu Lei | 16h |
| 77 | 5.1.7.2 | searching the keywords in database |  | 5d | 2015-08-28 | 2015-09-01 | 72 | 5.62d | 0d | Abdul Sami | 40h |
| 78 | 5.1.7.3 | presenting the data in the window |  | 3d | 2015-09-01 | 2015-09-04 | 77 | 5.62d |  | Bilawal | 24h |
| 79 | 5.1.8 | Searching module finished | milestone | 0d | 2015-09-04 | 2015-09-04 | 75 | 3d | 0d |  |  |
| 80 | 5.1.9 | **Develop the presenting module by** |  | 8d | 2015-08-30 | 2015-09-07 |  | 2.62d | 0d |  | 136h |
| 81 | 5.1.9.1 | **presenting the percentages of IPv6 available servers in each continent by** |  | 8d | 2015-08-31 | 2015-09-07 |  | 2.62d |  |  | 64h |
| 82 | 5.1.9.1.1 | sending the query to database |  | 4d | 2015-08-31 | 2015-09-03 | 74 | 2.62d | 0d | Leslie Vundu | 32h |
| 83 | 5.1.9.1.2 | calculating the numbers in the database |  | 1d | 2015-09-03 | 2015-09-04 | 82 | 2.62d | 0d | Robert | 8h |
| 84 | 5.1.9.1.3 | presenting the result in pie chart |  | 3d | 2015-09-04 | 2015-09-07 | 83 | 19.62d |  | Man Fu Lei | 24h |
| 85 | 5.1.9.2 | **presenting the percentages of IPv6 available servers in each country by** |  | 8d | 2015-08-30 | 2015-09-07 |  | 2.62d |  |  | 24h |
| 86 | 5.1.9.2.1 | sending the query to database | milestone | 0d | 2015-08-30 | 2015-08-30 | 74 | 8d |  | Abdul Sami |  |
| 87 | 5.1.9.2.2 | calculating the numbers in the database | milestone | 0d | 2015-09-03 | 2015-09-03 | 82 | 4d |  | Bilawal |  |
| 88 | 5.1.9.2.3 | presenting the result in pie chart |  | 3d | 2015-09-04 | 2015-09-07 | 83 | 2.62d |  | Leslie Vundu | 24h |
| 89 | 5.1.9.3 | **presenting the percentages of IPv6 available servers for different server types by** |  | 8d | 2015-08-30 | 2015-09-07 |  | 2.62d |  |  | 24h |
| 90 | 5.1.9.3.1 | sending the query to database | milestone | 0d | 2015-08-30 | 2015-08-30 | 74 | 8d |  | Robert |  |
| 91 | 5.1.9.3.2 | calculating the numbers in the database | milestone | 0d | 2015-09-03 | 2015-09-03 | 82 | 4d |  | Man Fu Lei |  |
| 92 | 5.1.9.3.3 | presenting the result in column chart |  | 3d | 2015-09-04 | 2015-09-07 | 83 | 2.62d |  | Abdul Sami | 24h |
| 93 | 5.1.9.4 | **presenting the performance of individual server when probed using IPv4 or IPv6 by** |  | 8d | 2015-08-30 | 2015-09-07 |  | 2.62d |  |  | 24h |
| 94 | 5.1.9.4.1 | sending the query to database | milestone | 0d | 2015-08-30 | 2015-08-30 | 74 | 8d |  | Bilawal |  |
| 95 | 5.1.9.4.2 | calculating the numbers in the database | milestone | 0d | 2015-09-03 | 2015-09-03 | 82 | 4d |  | Leslie Vundu |  |
| 96 | 5.1.9.4.3 | presenting the result in multi-series column chart |  | 3d | 2015-09-04 | 2015-09-07 | 83 | 2.62d |  | Robert | 24h |
| 97 | 5.1.10 | Presenting module finished | milestone | 0d | 2015-09-07 | 2015-09-07 | 80 | 2.62d | 0d |  |  |
| 98 | 5.1.11 | **Develop additional modules by** |  | 21d | 2015-09-07 | 2015-09-25 |  | 2.62d | 0d |  |  |
| 99 | 5.1.11.1 | developing import & export database module |  | 7d | 2015-09-07 | 2015-09-13 | 70, 79, 97, 74 | 2.62d | 0d |  |  |
| 100 | 5.1.11.2 | developing tables export module |  | 7d | 2015-09-13 | 2015-09-19 | 99 | 2.62d | 0d |  |  |
| 101 | 5.1.11.3 | developing charts export module |  | 7d | 2015-09-19 | 2015-09-25 | 100 | 2.62d |  |  |  |
| 102 | 5.1.12 | Diagnosis module finished | milestone | 0d | 2015-09-25 | 2015-09-25 | 98 | 2.62d | 0d |  |  |

| ID | WBS | Task | Type | Duration | Start | Finish | Predecessors | Total slack | Free slack | Constraint | Resources | Work |
| --- | --- | --- | --- | --- | --- | --- | --- | --- | --- | --- | --- | --- |
| 103 | 5.2 | **Test the software by testing** |  | 35d | 2015-08-30 | 2015-09-30 |  | 2.62d | 0d |  |  | 240h |
| 104 | 5.2.1 | probing functions |  | 5d | 2015-08-30 | 2015-09-03 | 70 | 13d |  |  | Robert | 40h |
| 105 | 5.2.2 | data processing |  | 5d | 2015-08-31 | 2015-09-04 | 74 | 31.62d |  |  | Man Fu Lei | 40h |
| 106 | 5.2.3 | data storage |  | 5d | 2015-08-31 | 2015-09-04 | 74 | 31.62d |  |  | Man Fu Lei | 40h |
| 107 | 5.2.4 | searching functions |  | 5d | 2015-09-04 | 2015-09-08 | 79 | 7d |  |  | Man Fu Lei | 40h |
| 108 | 5.2.5 | data presenting function |  | 5d | 2015-09-07 | 2015-09-11 | 97 | 4d |  |  | Man Fu Lei | 40h |
| 109 | 5.2.6 | additional function |  | 5d | 2015-09-25 | 2015-09-30 | 102 | 2.62d |  |  | Abdul Sami | 40h |
| 110 | 5.3 | Software testing completed | milestone | 0d | 2015-09-30 | 2015-09-30 | 103 | 2.62d | 0d |  |  |  |
| 111 | 5.4 | **Probe Internet servers** |  | 10d | 2015-09-30 | 2015-10-09 |  | 2.62d |  |  |  | 80h |
| 112 | 5.4.1 | Get a list of IPv6 available servers |  | 3d | 2015-09-30 | 2015-10-02 | 110 | 2.62d | 0d |  | Bilawal | 24h |
| 113 | 5.4.2 | Probe these servers at regular time interval |  | 7d | 2015-10-02 | 2015-10-09 | 112 | 2.62d | 0d |  | Leslie Vundu | 56h |
| 114 | 5.4.3 | Probing finished | milestone | 0d | 2015-10-09 | 2015-10-09 | 113 | 2.62d | 0d |  |  |  |
| 115 | 5.5 | **Test the database and presentation function** |  | 13.62d | 2015-10-09 | 2015-10-21 |  | 0d |  |  |  | 160h |
| 116 | 5.5.1 | Initial testing |  | 1d | 2015-10-09 | 2015-10-09 | 114 | 2.62d | 0d |  | Man Fu Lei | 8h |
| 117 | 5.5.2 | Secondary testing |  | 3d | 2015-10-10 | 2015-10-12 | 116 | 2.62d |  |  | Abdul Sami; Bilawal; Leslie Vundu; Robert | 96h |
| 118 | 5.5.3 | Testing by client |  | 7d | 2015-10-15 | 2015-10-21 | 117 | 0d |  | start no earlier than 2015-10-15 | Man Fu Lei | 56h |
| 119 | 5.6 | Full test completed | milestone | 0d | 2015-10-21 | 2015-10-21 | 118 | 0d |  |  |  |  |
| 120 | 6 | **Controlling** |  | 57d | 2015-08-27 | 2015-10-16 |  | 0d |  |  |  | 9568h |
| 121 | 6.1 | **Validate scope** |  | 57d | 2015-08-27 | 2015-10-16 |  | 0d |  |  |  | 2280h |
| 122 | 6.1.1 | **Make sure the product is within the scope** |  | 57d | 2015-08-27 | 2015-10-16 |  |  |  |  | Abdul Sami; Bilawal; Leslie Vundu; Man Fu Lei; Robert | 2280h |
| 123 | 6.1.1.1 | Make sure the product is within the scope 1 | manual | 1d | 2015-08-27 | 2015-08-27 |  |  |  | start no earlier than 2015-08-27 |  |  |
| 124 | 6.1.1.2 | Make sure the product is within the scope 2 | manual | 1d | 2015-09-03 | 2015-09-03 |  |  |  | start no earlier than 2015-09-03 |  |  |
| 125 | 6.1.1.3 | Make sure the product is within the scope 3 | manual | 1d | 2015-09-10 | 2015-09-10 |  |  |  | start no earlier than 2015-09-10 |  |  |
| 126 | 6.1.1.4 | Make sure the product is within the scope 4 | manual | 1d | 2015-09-17 | 2015-09-17 |  |  |  | start no earlier than 2015-09-17 |  |  |
| 127 | 6.1.1.5 | Make sure the product is within the scope 5 | manual | 1d | 2015-09-24 | 2015-09-24 |  |  |  | start no earlier than 2015-09-24 |  |  |
| 128 | 6.1.1.6 | Make sure the product is within the scope 6 | manual | 1d | 2015-10-01 | 2015-10-01 |  |  |  | start no earlier than 2015-10-01 |  |  |
| 129 | 6.1.1.7 | Make sure the product is within the scope 7 | manual | 1d | 2015-10-08 | 2015-10-08 |  |  |  | start no earlier than 2015-10-08 |  |  |

| ID | WBS | Task | Type | Duration | Start | Finish | Total slack | Constraint | Resources | Work |
| --- | --- | --- | --- | --- | --- | --- | --- | --- | --- | --- |
| 130 | 6.2 | **Review project plan** |  | 57d | 2015-08-27 | 2015-10-16 | 0d |  |  | 2280h |
| 131 | 6.2.1 | **Ensure the schedule is maintained** |  | 57d | 2015-08-27 | 2015-10-16 |  |  | Abdul Sami; Bilawal; Leslie Vundu; Man Fu Lei; Robert | 2280h |
| 132 | 6.2.1.1 | Ensure the schedule is maintained 1 | manual | 1d | 2015-08-27 | 2015-08-27 |  | start no earlier than 2015-08-27 |  |  |
| 133 | 6.2.1.2 | Ensure the schedule is maintained 2 | manual | 1d | 2015-09-03 | 2015-09-03 |  | start no earlier than 2015-09-03 |  |  |
| 134 | 6.2.1.3 | Ensure the schedule is maintained 3 | manual | 1d | 2015-09-10 | 2015-09-10 |  | start no earlier than 2015-09-10 |  |  |
| 135 | 6.2.1.4 | Ensure the schedule is maintained 4 | manual | 1d | 2015-09-17 | 2015-09-17 |  | start no earlier than 2015-09-17 |  |  |
| 136 | 6.2.1.5 | Ensure the schedule is maintained 5 | manual | 1d | 2015-09-24 | 2015-09-24 |  | start no earlier than 2015-09-24 |  |  |
| 137 | 6.2.1.6 | Ensure the schedule is maintained 6 | manual | 1d | 2015-10-01 | 2015-10-01 |  | start no earlier than 2015-10-01 |  |  |
| 138 | 6.2.1.7 | Ensure the schedule is maintained 7 | manual | 1d | 2015-10-08 | 2015-10-08 |  | start no earlier than 2015-10-08 |  |  |
| 139 | 6.3 | **Status Report** |  | 57d | 2015-08-27 | 2015-10-16 | 0d |  |  | 2280h |
| 140 | 6.3.1 | **Regular report about the progress** |  | 57d | 2015-08-27 | 2015-10-16 |  |  | Abdul Sami; Bilawal; Leslie Vundu; Man Fu Lei; Robert | 2280h |
| 141 | 6.3.1.1 | Regular report about the progress 1 | manual | 1d | 2015-08-27 | 2015-08-27 |  | start no earlier than 2015-08-27 |  |  |
| 142 | 6.3.1.2 | Regular report about the progress 2 | manual | 1d | 2015-09-03 | 2015-09-03 |  | start no earlier than 2015-09-03 |  |  |
| 143 | 6.3.1.3 | Regular report about the progress 3 | manual | 1d | 2015-09-10 | 2015-09-10 |  | start no earlier than 2015-09-10 |  |  |
| 144 | 6.3.1.4 | Regular report about the progress 4 | manual | 1d | 2015-09-17 | 2015-09-17 |  | start no earlier than 2015-09-17 |  |  |
| 145 | 6.3.1.5 | Regular report about the progress 5 | manual | 1d | 2015-09-24 | 2015-09-24 |  | start no earlier than 2015-09-24 |  |  |
| 146 | 6.3.1.6 | Regular report about the progress 6 | manual | 1d | 2015-10-01 | 2015-10-01 |  | start no earlier than 2015-10-01 |  |  |
| 147 | 6.3.1.7 | Regular report about the progress 7 | manual | 1d | 2015-10-08 | 2015-10-08 |  | start no earlier than 2015-10-08 |  |  |
| 148 | 6.4 | **Report performance** |  | 57d | 2015-08-27 | 2015-10-16 | 0d |  |  | 2280h |
| 149 | 6.4.1 | **Regular report about the performance** |  | 57d | 2015-08-27 | 2015-10-16 |  |  | Abdul Sami; Bilawal; Leslie Vundu; Man Fu Lei; Robert | 2280h |
| 150 | 6.4.1.1 | Regular report about the performance 1 | manual | 1d | 2015-08-27 | 2015-08-27 |  | start no earlier than 2015-08-27 |  |  |
| 151 | 6.4.1.2 | Regular report about the performance 2 | manual | 1d | 2015-09-03 | 2015-09-03 |  | start no earlier than 2015-09-03 |  |  |
| 152 | 6.4.1.3 | Regular report about the performance 3 | manual | 1d | 2015-09-10 | 2015-09-10 |  | start no earlier than 2015-09-10 |  |  |
| 153 | 6.4.1.4 | Regular report about the performance 4 | manual | 1d | 2015-09-17 | 2015-09-17 |  | start no earlier than 2015-09-17 |  |  |
| 154 | 6.4.1.5 | Regular report about the performance 5 | manual | 1d | 2015-09-24 | 2015-09-24 |  | start no earlier than 2015-09-24 |  |  |
| 155 | 6.4.1.6 | Regular report about the performance 6 | manual | 1d | 2015-10-01 | 2015-10-01 |  | start no earlier than 2015-10-01 |  |  |
| 156 | 6.4.1.7 | Regular report about the performance 7 | manual | 1d | 2015-10-08 | 2015-10-08 |  | start no earlier than 2015-10-08 |  |  |

| ID | WBS | Task | Type | Duration | Start | Finish | Total slack | Resources | Work |
| --- | --- | --- | --- | --- | --- | --- | --- | --- | --- |
| 157 | 6.5 | **Control changes** |  | 55.12d | 2015-08-27 | 2015-10-14 | 0d |  | 448h |
| 158 | 6.5.1 | **Control changes 1** |  | 9d | 2015-08-27 | 2015-09-03 |  |  | 64h |
| 159 | 6.5.1.1 | Identify possible changes | manual | 1d | 2015-08-27 | 2015-08-27 |  | Robert | 8h |
| 160 | 6.5.1.2 | Determine if change is necessary | manual | 1d | 2015-08-27 | 2015-08-27 |  | Leslie Vundu | 8h |
| 161 | 6.5.1.3 | Approve the change | manual | 2d | 2015-08-27 | 2015-08-28 |  | Abdul Sami | 16h |
| 162 | 6.5.1.4 | Apply change in the product and the documents | manual | 4d | 2015-08-27 | 2015-08-30 |  | Man Fu Lei | 32h |
| 163 | 6.5.2 | **Control changes 2** |  | 10.12d | 2015-09-03 | 2015-09-11 |  |  | 64h |
| 164 | 6.5.2.1 | Identify possible changes | manual | 1d | 2015-09-03 | 2015-09-03 |  | Robert | 8h |
| 165 | 6.5.2.2 | Determine if change is necessary | manual | 1d | 2015-09-03 | 2015-09-03 |  | Leslie Vundu | 8h |
| 166 | 6.5.2.3 | Approve the change | manual | 2d | 2015-09-03 | 2015-09-04 |  | Abdul Sami | 16h |
| 167 | 6.5.2.4 | Apply change in the product and the documents | manual | 4d | 2015-09-03 | 2015-09-06 |  | Man Fu Lei | 32h |
| 168 | 6.5.3 | **Control changes 3** |  | 10.12d | 2015-09-10 | 2015-09-18 |  |  | 64h |
| 169 | 6.5.3.1 | Identify possible changes | manual | 1d | 2015-09-10 | 2015-09-10 |  | Robert | 8h |
| 170 | 6.5.3.2 | Determine if change is necessary | manual | 1d | 2015-09-10 | 2015-09-10 |  | Leslie Vundu | 8h |
| 171 | 6.5.3.3 | Approve the change | manual | 2d | 2015-09-10 | 2015-09-11 |  | Abdul Sami | 16h |
| 172 | 6.5.3.4 | Apply change in the product and the documents | manual | 4d | 2015-09-10 | 2015-09-13 |  | Man Fu Lei | 32h |
| 173 | 6.5.4 | **Control changes 4** |  | 10.12d | 2015-09-17 | 2015-09-25 |  |  | 64h |
| 174 | 6.5.4.1 | Identify possible changes | manual | 1d | 2015-09-17 | 2015-09-17 |  | Robert | 8h |
| 175 | 6.5.4.2 | Determine if change is necessary | manual | 1d | 2015-09-17 | 2015-09-17 |  | Leslie Vundu | 8h |
| 176 | 6.5.4.3 | Approve the change | manual | 2d | 2015-09-17 | 2015-09-18 |  | Abdul Sami | 16h |
| 177 | 6.5.4.4 | Apply change in the product and the documents | manual | 4d | 2015-09-17 | 2015-09-20 |  | Man Fu Lei | 32h |
| 178 | 6.5.5 | **Control changes 5** |  | 10.12d | 2015-09-24 | 2015-10-02 |  |  | 64h |
| 179 | 6.5.5.1 | Identify possible changes | manual | 1d | 2015-09-24 | 2015-09-24 |  | Robert | 8h |
| 180 | 6.5.5.2 | Determine if change is necessary | manual | 1d | 2015-09-24 | 2015-09-24 |  | Leslie Vundu | 8h |
| 181 | 6.5.5.3 | Approve the change | manual | 2d | 2015-09-24 | 2015-09-25 |  | Abdul Sami | 16h |
| 182 | 6.5.5.4 | Apply change in the product and the documents | manual | 4d | 2015-09-24 | 2015-09-27 |  | Man Fu Lei | 32h |

| ID | WBS | Task | Type | Duration | Start | Finish | Predecessors | Total slack | Constraint | Resources | Work |
| --- | --- | --- | --- | --- | --- | --- | --- | --- | --- | --- | --- |
| 183 | 6.5.6 | **Control changes 6** |  | 10.12d | 2015-10-01 | 2015-10-09 |  |  |  |  | 64h |
| 184 | 6.5.6.1 | Identify possible changes | manual | 1d | 2015-10-01 | 2015-10-01 |  |  |  | Robert | 8h |
| 185 | 6.5.6.2 | Determine if change is necessary | manual | 1d | 2015-10-01 | 2015-10-01 |  |  |  | Leslie Vundu | 8h |
| 186 | 6.5.6.3 | Approve the change | manual | 2d | 2015-10-01 | 2015-10-02 |  |  |  | Abdul Sami | 16h |
| 187 | 6.5.6.4 | Apply change in the product and the documents | manual | 4d | 2015-10-01 | 2015-10-04 |  |  |  | Man Fu Lei | 32h |
| 188 | 6.5.7 | **Control changes 7** |  | 7.88d | 2015-10-08 | 2015-10-14 |  |  |  |  | 64h |
| 189 | 6.5.7.1 | Identify possible changes | manual | 1d | 2015-10-08 | 2015-10-08 |  |  |  | Robert | 8h |
| 190 | 6.5.7.2 | Determine if change is necessary | manual | 1d | 2015-10-08 | 2015-10-08 |  |  |  | Leslie Vundu | 8h |
| 191 | 6.5.7.3 | Approve the change | manual | 2d | 2015-10-08 | 2015-10-09 |  |  |  | Abdul Sami | 16h |
| 192 | 6.5.7.4 | Apply change in the product and the documents | manual | 4d | 2015-10-08 | 2015-10-11 |  |  |  | Man Fu Lei | 32h |
| 193 | 7 | **Closing** |  | 14d | 2015-10-21 | 2015-11-02 |  | 0d |  |  | 288h |
| 194 | 7.1 | Prepare for program submission |  | 6d | 2015-10-21 | 2015-10-26 | 119 | 0d |  | Man Fu Lei | 48h |
| 195 | 7.2 | Submit the software | milestone | 0d | 2015-10-26 | 2015-10-26 | 194 | 0d | start no earlier than 2015-10-22 | Abdul Sami; Bilawal; Leslie Vundu; Man Fu Lei; Robert |  |
| 196 | 7.3 | **Prepare final project report** |  | 6d | 2015-10-21 | 2015-10-26 |  | 0d |  |  | 48h |
| 197 | 7.3.1 | Finalize the project report |  | 6d | 2015-10-21 | 2015-10-26 | 119 | 0d |  | Abdul Sami | 48h |
| 198 | 7.3.2 | Submit the final report | milestone | 0d | 2015-10-26 | 2015-10-26 | 197 | 0d |  | Abdul Sami; Bilawal; Leslie Vundu; Man Fu Lei; Robert |  |
| 199 | 7.4 | **Present final project** |  | 8d | 2015-10-26 | 2015-11-02 |  | 0d |  |  | 192h |
| 200 | 7.4.1 | Prepare the slides for presentation |  | 8d | 2015-10-26 | 2015-11-02 | 198 | 0d |  | Bilawal | 64h |
| 201 | 7.4.2 | Prepare the scripts for presentation |  | 8d | 2015-10-26 | 2015-11-02 | 198 | 0d |  | Leslie Vundu | 64h |
| 202 | 7.4.3 | Prepare the software for presentation |  | 8d | 2015-10-26 | 2015-11-02 | 195 | 0d |  | Man Fu Lei | 64h |
| 203 | 7.4.4 | Present the project | milestone | 0d | 2015-11-02 | 2015-11-02 | 202 | 0d |  | Abdul Sami; Bilawal; Leslie Vundu; Man Fu Lei; Robert |  |
| 204 | 7.5 | Project completed | milestone | 0d | 2015-11-02 | 2015-11-02 | 203 | 0d |  |  |  |
